# pricerite

Schedule from MS Project, 2018-01-05 to 2018-04-11.

## Calendars

- Standard: Mon-Fri 08:00-12:00, 13:00-17:00; Sat-Sun off. Exceptions (off unless hours are given): 2018-02-16 (年初一), 2018-02-19 (年初三).

## Resources

| Resource |
| --- |
| SAP |
| SPRO |
| SBS |

## Schedule

| ID | WBS | Task | Type | Duration | Start | Finish | Predecessors | Total slack | Free slack | Constraint | Resources | Work |
| --- | --- | --- | --- | --- | --- | --- | --- | --- | --- | --- | --- | --- |
| 1 | 1 | 藍圖確認 (PREPARE) | milestone | 0d | 2018-01-05 | 2018-01-05 |  | 0d |  | start no earlier than 2018-01-05 |  |  |
| 3 | 2 | **BUILD** |  | 33d | 2018-01-05 | 2018-02-22 | 1 | 0d |  |  |  | 944h |
| 4 | 2.1 | 客戶參數設定 |  | 10d | 2018-01-05 | 2018-01-18 |  | 0d |  |  | SPRO | 80h |
| 5 | 2.2 | 流程設定 |  | 5d | 2018-01-19 | 2018-01-25 | 4 | 5d | 0d |  | SPRO | 40h |
| 6 | 2.3 | 數據權限設定 |  | 10d | 2018-01-26 | 2018-02-08 | 5 | 5d |  |  | SPRO | 80h |
| 7 | 2.4 | 糸統開發 |  | 15d | 2018-01-19 | 2018-02-08 | 4 | 5d |  |  | SAP | 120h |
| 8 | 2.5 | 糸統整合 |  | 20d | 2018-01-19 | 2018-02-15 | 4 | 0d |  |  | SPRO; SBS | 320h |
| 9 | 2.6 | 數據遷移計劃 |  | 10d | 2018-01-05 | 2018-01-18 |  | 57d |  |  | SPRO; SBS | 160h |
| 10 | 2.7 | 報表製作 |  | 18d | 2018-01-25 | 2018-02-22 | 5 | 34d |  |  | SPRO; SBS | 144h |
| 11 | 3 | **VERIFY** |  | 27d | 2018-02-20 | 2018-03-28 | 5, 6, 7, 8 | 0d |  |  |  | 336h |
| 12 | 3.1 | 客戶案例及測試週期設計 |  | 5d | 2018-02-20 | 2018-02-26 |  | 0d |  |  | SPRO; SBS | 80h |
| 13 | 3.2 | 測試數據準備 |  | 2d | 2018-02-27 | 2018-02-28 | 12 | 0d |  |  | SBS | 16h |
| 14 | 3.3 | 測試數據遷移 |  | 5d | 2018-03-01 | 2018-03-07 | 13 | 0d |  |  | SPRO; SBS | 80h |
| 15 | 3.4 | 關鍵用戶培訓及測試 |  | 5d | 2018-03-08 | 2018-03-14 | 14 | 0d |  |  | SPRO; SBS | 80h |
| 16 | 3.5 | 系統最後優化及問題清理 |  | 10d | 2018-03-15 | 2018-03-28 | 15 | 10d |  |  | SPRO | 80h |
| 17 | 4 | **LAUNCH** |  | 30d | 2018-03-01 | 2018-04-11 |  | 0d |  |  |  | 320h |
| 18 | 4.1 | 生產系統設定 |  | 10d | 2018-03-15 | 2018-03-28 | 15 | 0d |  |  | SPRO; SBS | 160h |
| 19 | 4.2 | 真實數據準備 |  | 10d | 2018-03-01 | 2018-03-14 | 13 | 10d |  |  | SBS | 80h |
| 20 | 4.3 | 真實數據遷移及最後檢驗 |  | 5d | 2018-03-29 | 2018-04-11 | 19, 18 | 0d |  |  | SPRO; SBS | 80h |
| 21 | 4.4 | 系統上線 | milestone | 0d | 2018-04-11 | 2018-04-11 | 20 | 0d |  |  |  |  |
