# SBS/C4C

Schedule from MS Project, 2018-01-05 to 2018-04-10.

## Calendars

- Standard: Mon-Fri 08:00-12:00, 13:00-17:00; Sat-Sun off. Exceptions (off unless hours are given): 2018-02-16 (年初一), 2018-02-19 (年初三).

## Resources

| Resource |
| --- |
| SAP |
| SPRO |
| SBS |

## Schedule

| ID | WBS | Task | Type | Duration | Start | Finish | Predecessors | Total slack | Constraint | Resources | Work |
| --- | --- | --- | --- | --- | --- | --- | --- | --- | --- | --- | --- |
| 1 | 1 | 藍圖確認 (PREPARE) | milestone | 0d | 2018-01-05 | 2018-01-05 |  | 0d | start no earlier than 2018-01-05 |  |  |
| 3 | 2 | **BUILD** |  | 37d | 2018-01-05 | 2018-02-28 | 1 | 0d |  |  | 912h |
| 4 | 2.1 | **客戶參數設定** |  | 5d | 2018-01-05 | 2018-01-11 |  | 0d |  | SPRO | 40h |
| 5 | 2.1.1 | 组织架构配置 |  | 0.5d | 2018-01-05 | 2018-01-05 |  | 0d |  |  |  |
| 6 | 2.1.2 | 用戶角色配置 |  | 1d | 2018-01-05 | 2018-01-08 | 5 | 0d |  |  |  |
| 7 | 2.1.3 | 基本版面配置 |  | 1d | 2018-01-08 | 2018-01-09 | 6 | 0d |  |  |  |
| 8 | 2.1.4 | 人员用户配置 |  | 0.5d | 2018-01-09 | 2018-01-09 | 7 | 0d |  |  |  |
| 9 | 2.1.5 | 產品類別配置 |  | 0.5d | 2018-01-10 | 2018-01-10 | 8 | 0d |  |  |  |
| 10 | 2.1.6 | 線索/機會/銷售活動類別設置 |  | 0.5d | 2018-01-10 | 2018-01-10 | 9 | 0d |  |  |  |
| 11 | 2.1.7 | 銷售週期/階段設置 |  | 0.5d | 2018-01-11 | 2018-01-11 | 10 | 0d |  |  |  |
| 12 | 2.1.8 | 記錄單類別設置 |  | 0.5d | 2018-01-11 | 2018-01-11 | 10, 11 | 0d |  |  |  |
| 13 | 2.2 | **流程設定** |  | 14d | 2018-01-12 | 2018-01-31 | 4 | 0d |  | SPRO | 112h |
| 14 | 2.2.1 | 線索管理流程 |  | 1d | 2018-01-12 | 2018-01-12 |  | 0d |  |  |  |
| 15 | 2.2.2 | 銷售主流程 |  | 2d | 2018-01-15 | 2018-01-16 | 14 | 0d |  |  |  |
| 16 | 2.2.3 | 新產品銷售流程 |  | 1d | 2018-01-17 | 2018-01-17 | 15 | 0d |  |  |  |
| 17 | 2.2.4 | 舊產品銷售流程 |  | 1d | 2018-01-18 | 2018-01-18 | 16 | 0d |  |  |  |
| 18 | 2.2.5 | 銷售報價流程 |  | 2d | 2018-01-19 | 2018-01-22 | 17 | 0d |  |  |  |
| 19 | 2.2.6 | 申請公共池客戶流程 |  | 2d | 2018-01-23 | 2018-01-24 | 18 | 0d |  |  |  |
| 20 | 2.2.7 | 銷售活動管理流程 |  | 2d | 2018-01-25 | 2018-01-26 | 19 | 0d |  |  |  |
| 21 | 2.2.8 | 客戶資格審批 |  | 1d | 2018-01-29 | 2018-01-29 | 20 | 0d |  |  |  |
| 22 | 2.2.9 | 客戶付款方式審批 |  | 1d | 2018-01-30 | 2018-01-30 | 21 | 0d |  |  |  |
| 23 | 2.2.10 | 出差審批 |  | 1d | 2018-01-31 | 2018-01-31 | 22 | 0d |  |  |  |
| 24 | 2.3 | 數據權限設定 |  | 10d | 2018-02-01 | 2018-02-14 | 13 | 0d |  | SPRO | 80h |
| 25 | 2.4 | **糸統開發** |  | 15d | 2018-01-12 | 2018-02-01 | 4 | 9d |  | SAP | 120h |
| 26 | 2.4.1 | 公共池客戶管理/申請/授權 |  | 15d | 2018-01-12 | 2018-02-01 |  | 9d |  |  |  |

| ID | WBS | Task | Duration | Start | Finish | Predecessors | Total slack | Free slack | Resources | Work |
| --- | --- | --- | --- | --- | --- | --- | --- | --- | --- | --- |
| 27 | 2.5 | **糸統整合** | 20d | 2018-01-12 | 2018-02-08 | 4 | 4d |  | SPRO; SBS | 320h |
| 28 | 2.5.1 | ERP<->C4C 客戶資料 | 3d | 2018-01-12 | 2018-01-16 |  | 4d | 0d |  |  |
| 29 | 2.5.2 | ERP->C4C 產品資料 | 3d | 2018-01-17 | 2018-01-19 | 28 | 4d | 0d |  |  |
| 30 | 2.5.3 | ERP->C4C 產品價格 | 3d | 2018-01-22 | 2018-01-24 | 29 | 4d | 0d |  |  |
| 31 | 2.5.4 | C4C->ERP 報價單 | 3d | 2018-01-25 | 2018-01-29 | 30 | 4d | 0d |  |  |
| 32 | 2.5.5 | ERP->C4C 銷售訂單 | 3d | 2018-01-30 | 2018-02-01 | 31 | 4d | 0d |  |  |
| 33 | 2.5.6 | ERP->C4C 生產進度異常 | 1d | 2018-02-02 | 2018-02-02 | 32 | 4d | 0d |  |  |
| 34 | 2.5.7 | C4C<->BPM 出差紀錄 | 1d | 2018-02-05 | 2018-02-05 | 33 | 4d | 0d |  |  |
| 35 | 2.5.8 | ERP->C4C 財務資料 | 1d | 2018-02-06 | 2018-02-06 | 34 | 4d | 0d |  |  |
| 36 | 2.5.9 | BMP<->C4C 用品申請 | 1d | 2018-02-07 | 2018-02-07 | 35 | 4d | 0d |  |  |
| 37 | 2.5.10 | BMP<->C4C 客戶投訴支持消息 | 1d | 2018-02-08 | 2018-02-08 | 36 | 4d |  |  |  |
| 38 | 2.6 | **數據遷移計劃** | 6d | 2018-01-05 | 2018-01-12 |  | 60d |  | SPRO; SBS | 96h |
| 39 | 2.6.1 | 客戶數據 | 2d | 2018-01-05 | 2018-01-08 |  | 60d | 0d |  |  |
| 40 | 2.6.2 | 產品類別及產品清單 | 2d | 2018-01-09 | 2018-01-10 | 39 | 60d | 0d |  |  |
| 41 | 2.6.3 | 未完成的銷售單 | 2d | 2018-01-11 | 2018-01-12 | 40 | 60d |  |  |  |
| 42 | 2.7 | **報表製作** | 18d | 2018-02-01 | 2018-02-28 | 13 | 29d |  | SPRO; SBS | 144h |
| 43 | 2.7.1 | 報表技術培訓 | 1d | 2018-02-01 | 2018-02-01 |  | 29d | 0d |  |  |
| 44 | 2.7.2 | 報價單 | 3d | 2018-02-02 | 2018-02-06 | 43 | 29d | 0d |  |  |
| 45 | 2.7.3 | 報表 | 14d | 2018-02-07 | 2018-02-28 | 44 | 29d |  |  |  |
| 46 | 3 | **VERIFY** | 27d | 2018-02-15 | 2018-03-27 | 13, 24, 25, 27 | 0d |  |  | 336h |
| 47 | 3.1 | 客戶案例及測試週期設計 | 5d | 2018-02-15 | 2018-02-23 |  | 0d |  | SPRO; SBS | 80h |
| 48 | 3.2 | 測試數據準備 | 2d | 2018-02-26 | 2018-02-27 | 47 | 0d |  | SBS | 16h |
| 49 | 3.3 | 測試數據遷移 | 5d | 2018-02-28 | 2018-03-06 | 48 | 0d |  | SPRO; SBS | 80h |
| 50 | 3.4 | 關鍵用戶培訓及測試 | 5d | 2018-03-07 | 2018-03-13 | 49 | 0d |  | SPRO; SBS | 80h |
| 51 | 3.5 | 系統最後優化及問題清理 | 10d | 2018-03-14 | 2018-03-27 | 50 | 10d |  | SPRO | 80h |

| ID | WBS | Task | Type | Duration | Start | Finish | Predecessors | Total slack | Resources | Work |
| --- | --- | --- | --- | --- | --- | --- | --- | --- | --- | --- |
| 52 | 4 | **LAUNCH** |  | 30d | 2018-02-28 | 2018-04-10 |  | 0d |  | 320h |
| 53 | 4.1 | 生產系統設定 |  | 10d | 2018-03-14 | 2018-03-27 | 50 | 0d | SPRO; SBS | 160h |
| 54 | 4.2 | 真實數據準備 |  | 10d | 2018-02-28 | 2018-03-13 | 48 | 10d | SBS | 80h |
| 55 | 4.3 | 真實數據遷移及最後檢驗 |  | 5d | 2018-03-28 | 2018-04-10 | 54, 53 | 0d | SPRO; SBS | 80h |
| 56 | 4.4 | 系統上線 | milestone | 0d | 2018-04-10 | 2018-04-10 | 55 | 0d |  |  |
